# 35 — The pre-receive hook (Go)
#
# Every push accounted for: what a book may hold, in canonical form, within
# its limits. Workflow 14, What the service checks.

task hook "The pre-receive hook" {
  depends service.git_http, foundation.e2e_api

  task refs "Refs and history" {
    effort 1d
    allocate team
    complete 100
    note "Only refs/heads/main, no tags or notes, no deletion, fast-forward only. Tests: behavior (the hook installed in a real bare repository, pushed to with the git CLI: a tag, a note, another branch, a deletion and a non-fast-forward each refused; a fast-forward to main accepted); e2e-api (a non-fast-forward push from the git CLI refused by the stack). Refinement: tasks/refinements/hook/refs.md"
  }
  task stowaways "No stowaways" {
    effort 2d
    allocate team
    complete 100
    depends !refs
    note "List every object in quarantine and compare with rev-list --objects from the new head, excluding what the repository already had; one object more refuses the push. Tests: unit (service/internal/hook/stowaways_test.go: rev-list parsing, cat-file parsing, three-set StowawayReason determination); behavior (the hook installed in a real bare repository, pushed to with the git CLI: a pack carrying an object unreachable from the new head refused; a push reusing objects the repository already had accepted); e2e-api (a crafted pack with a stowaway pushed to the stack and refused). Refinement: tasks/refinements/hook/stowaways.md"
  }
  task contents "What a book may hold" {
    effort 2d
    allocate team
    complete 100
    depends !stowaways
    note "Every blob reachable from a new commit: path against the allowed kinds (*.cifra.md, *.setlist.md, README.md, .gitattributes as the app writes it), regular files only, UTF-8, 256 KB; trees and commits of reasonable size. Tests: unit (path and kind rules, UTF-8, sizes); behavior (the hook installed in a real bare repository, pushed to with the git CLI: each disallowed path, a symlink, a non-UTF-8 file, a file over 256 KB refused; .gitattributes as the app writes it accepted). Refinement: tasks/refinements/hook/contents.md"
  }
  task canonical "Canonical form" {
    effort 2d
    allocate team
    complete 100
    depends !contents, cifra_go.writer, cifra_go.setlists, cifra_go.versions
    note "Every song and setlist in a new commit canonical under the current or the previous form; README.md held to the text rules; marker lines refused. Tests: unit (the check over songs, setlists and README.md); behavior (the hook installed in a real bare repository, pushed to with the git CLI: a non-canonical song refused, a song in the previous form accepted, a marked file refused, README.md held to the text rules); e2e-api (isomorphic-git pushing a non-canonical song refused by the stack). Refinement: tasks/refinements/hook/canonical.md"
  }
  task limits "Limits" {
    effort 1d
    allocate team
    complete 100
    depends !contents
    note "50 MB per book, the account's remaining quota from ESTANTE_* in the environment, receive.maxInputSize, receive.fsckObjects. Tests: unit (service/internal/hook/limits_test.go: env parsing, net-growth summing, decision function); behavior (the hook installed in a real bare repository, pushed to with the git CLI: a book over 50 MB, a push over the account's remaining quota from ESTANTE_*, receive.maxInputSize, a corrupt object caught by fsck — each refused; service/internal/server/git_test.go: TestReceivePackGuards proves the service sets both -c guards); e2e-api (a push over the account's quota, set in Postgres, refused by the stack). Refinement: tasks/refinements/hook/limits.md"
  }
  task messages "Refusal messages" {
    effort 1d
    allocate team
    complete 100
    depends !canonical, !limits
    note "Each refusal names what failed, through git's own channel, readable by isomorphic-git and the app. Tests: unit (one message per refusal, naming what failed); e2e-api (the whole refusal matrix against the stack, each message read as the git CLI and isomorphic-git present it). Refinement: tasks/refinements/hook/messages.md"
  }
  task home_book "Validate a home-book push" {
    effort 2d
    allocate team
    complete 100
    depends design.home_book_format, !contents, !canonical
    note "The service tags the account's home book as its own repository kind and forwards that kind to the pre-receive hook through ESTANTE_*; the hook validates a home-book push against docs/home-book-format.md §8 — allowed kinds in canonical settings form, song files refused, malformed/non-canonical settings refused, no settings content logged — bypassing the songbook hook.contents/hook.canonical checks. Source: tasks/refinements/design/home_book_format.md (Decisions: The home book collides with the songbook rule). DIRECTION §2.1, §3.2, §3.3; workflow 8; docs/home-book-format.md §8. Tests: unit (settings-JSON validation: well-formed and canonical accepted, a song file refused, a malformed or non-canonical settings file refused); behavior (Go httptest against real git: a home-book push accepted, a song pushed to a home book refused, a settings file pushed to a songbook refused); e2e-api (isomorphic-git pushes a home book through the compose stack, a disallowed push refused — harness foundation.e2e_api). Refinement: tasks/refinements/hook/home_book.md"
  }
}
